# GOBIERNO SOA

How a schedule from MS Project changed from version to version. A marks actual dates.

## Version 1 (saved 2019-09-06, file Proyecto BP SOA v4.mpp)

Note of the change: subir documentación

| ID | WBS | Task | Duration | Start | Finish | Predecessors | Total float | Constraint |
| --- | --- | --- | --- | --- | --- | --- | --- | --- |
| 1 | 1 | **Patrón y diseño de contrato SOA - Adelanto** | 9d | 2019-09-02 | 2019-09-12 |  | 0d |  |
| 2 |  | 003 La anotomía del contrato del WS | 3d | 2019-09-02 | 2019-09-04 |  | 0d | start no earlier than 2019-09-02 |
| 3 |  | 002 Principio de Diseño Contratos de Servicio | 3d | 2019-09-05 | 2019-09-09 | 2 | 0d |  |
| 4 |  | 001 Patrón del diseño del contrato de servicios | 3d | 2019-09-10 | 2019-09-12 | 3 | 0d | start no earlier than 2019-09-02 |
| 5 | 2 | **Definición de etapas de proyecto SOA** | 5d | 2019-09-13 | 2019-09-19 | 4 | 0d |  |
| 6 |  | Definir etapas fundamentales del ciclo de vida del proyecto SOA | 1d | 2019-09-13 | 2019-09-13 |  | 0d |  |
| 7 |  | La descripcion de cada una de esas etapas y sus acciones principales | 1d | 2019-09-16 | 2019-09-16 | 6 | 0d |  |
| 8 |  | Las acciones de gobierno SOA a ser ejecutadas durante la etapa de Analisis de Servicios | 3d | 2019-09-17 | 2019-09-19 | 7 | 0d |  |
| 9 |  | Entregable - Documento - matriz con la definición de etapas y acciones por cada una | 0d | 2019-09-18 | 2019-09-18 |  |  |  |
| 10 | 3 | **Patrones de Diseño SOA** | 7d | 2019-09-20 | 2019-09-30 | 5 | 0d |  |
| 11 |  | Se describirá el patrón de diseño SOA que se aplicará en el Banco Popular | 2d | 2019-09-20 | 2019-09-23 |  | 0d |  |
| 12 |  | Patrón de centralización del inventario de servicios | 3d | 2019-09-24 | 2019-09-26 | 11 | 0d | start no earlier than 2019-09-11 |
| 13 |  | 001 Patrón del diseño del contrato de servicios | 0d | 2019-09-26 | 2019-09-26 | 12 | -1d |  |
| 14 |  | Patrón de la capacidad de composición del servicio. | 3d | 2019-09-26 | 2019-09-30 | 13 | 0d |  |
| 15 |  | Entregable - Documento de patrones de diseño SOA | 0d | 2019-09-30 | 2019-09-30 |  |  |  |
| 16 | 4 | **Principios de Diseño** | 3d | 2019-09-30 | 2019-10-02 | 10 | 0d |  |
| 17 |  | 002 Contratos de Servicio | 0d | 2019-09-30 | 2019-09-30 |  | -1d |  |
| 18 |  | Acoplamiento de Servicio | 2d | 2019-10-01 | 2019-10-02 | 17 | 0d |  |
| 19 |  | Entregable - Documento de principios de diseño | 0d | 2019-10-02 | 2019-10-02 |  |  |  |
| 20 | 5 | **Establecimiento de Estándares** | 3d | 2019-10-02 | 2019-10-04 | 16 | 0d |  |
| 21 |  | 003 La anotomía del contrato del WS | 0d | 2019-10-02 | 2019-10-02 |  | -1d |  |
| 22 |  | La guía para los Namespaces | 2d | 2019-10-03 | 2019-10-04 | 21 | 0d |  |
| 23 |  | Entregable - Documento establecimiento de estándares | 0d | 2019-10-04 | 2019-10-04 |  |  |  |
| 24 | 6 | **Inventario de Servicios** | 25d | 2019-10-07 | 2019-11-08 | 20 | 0d |  |
| 25 |  | Se debe definir del inventario actual a cuáles servicios se le realiza el perfil del Servicio recomendamos SAGA, SIPO o t24. | 5d | 2019-10-07 | 2019-10-11 |  | 0d |  |
| 26 |  | A los servicios previamente seleccionados se les realizara la ficha del Perfil del Servicio. | 20d | 2019-10-14 | 2019-11-08 | 25 | 0d |  |
| 27 |  | Entregable - Documento inventario de servicios y la ficha de perfil de cada uno según se haya elegido para un sistema | 0d | 2019-11-08 | 2019-11-08 |  |  |  |
| 28 | 7 | **SOA GOVERNANCE PROGRAM OFFICE (SGPO)** | 30d | 2019-11-11 | 2019-12-20 | 24 | 0d |  |
| 29 |  | Desde el punto de vista de gobernanza la Creación de la matriz de roles y responsabilidades a lo largo de todas las etapas del proyecto SOA. | 15d | 2019-11-11 | 2019-11-29 |  | 0d |  |
| 30 |  | Un mapeo entre los roles organizacionales y la governanza SOA sus preceptos y procesos. | 15d | 2019-12-02 | 2019-12-20 | 29 | 0d |  |
| 31 |  | Entregable - Documento - matriz de roles - responsabilidades y mapeo de roles - gobernanza | 0d | 2019-12-20 | 2019-12-20 |  |  |  |

## Version 2 (data date 2019-09-16, saved 2019-09-24, file Proyecto BP SOA v4 cambio 1.mpp)

Note of the change: subir documentación

Last finish 2019-12-20 → 2020-03-25 (+96d). Complete tasks 0 → 4.

Changed:

| ID | Task | Start | Finish | Duration | Complete | Total float | Predecessors | Other |
| --- | --- | --- | --- | --- | --- | --- | --- | --- |
| 1 | **Patrón y diseño de contrato SOA - Adelanto** | 2019-09-02 A |  |  | 0% → 89% | 0d → 139d |  |  |
| 2 | 003 La anotomía del contrato del WS | 2019-09-02 A | 2019-09-04 A |  | 0% → 100% | 0d → none |  | resources none → Renato |
| 3 | 002 Principio de Diseño Contratos de Servicio | 2019-09-05 A | 2019-09-09 A |  | 0% → 100% | 0d → none |  | resources none → Renato |
| 4 | 001 Patrón del diseño del contrato de servicios | 2019-09-10 A |  |  | 0% → 67% | 0d → 139d |  | resources none → Renato |
| 5 | **Definición de etapas de proyecto SOA** | 2019-09-13 A | 2019-09-19 → 2019-09-25 (+6d) | 5d → 9d | 0% → 40% | 0d → 130d | 4 → none |  |
| 6 | Definir etapas fundamentales del ciclo de vida del proyecto SOA | 2019-09-13 A | 2019-09-13 A |  | 0% → 100% | 0d → none | none → 4 | resources none → Renato |
| 7 | La descripción de cada una de esas etapas y sus acciones principales |  | 2019-09-16 A |  | 0% → 100% | 0d → none |  | was named La descripcion de cada una de esas etapas y sus acciones principales; resources none → Renato |
| 8 | Las acciones de gobierno SOA a ser ejecutadas durante la etapa de Análisis de Servicios | 2019-09-17 → 2019-09-23 (+6d) | 2019-09-19 → 2019-09-25 (+6d) |  |  |  | 7 → 11 | was named Las acciones de gobierno SOA a ser ejecutadas durante la etapa de Analisis de Servicios; resources none → Renato |
| 9 | Entregable - Documento - matriz con la definición de etapas y acciones por cada una | 2019-09-18 → 2019-09-25 (+7d) | 2019-09-18 → 2019-09-25 (+7d) |  |  | none → 130d | none → 8 | resources none → Renato |
| 10 | **Patrones de Diseño SOA** | 2019-09-20 → 2019-09-17 (-3d) | 2019-09-30 → 2019-10-11 (+11d) | 7d → 19d |  |  | 5 → none |  |
| 11 | Se describirá el patrón de diseño SOA que se aplicará en el Banco Popular | 2019-09-20 → 2019-09-17 (-3d) | 2019-09-23 → 2019-09-20 (-3d) | 2d → 4d |  |  | none → 7 | resources none → Renato [50%] |
| 12 | Patrón de centralización del inventario de servicios | 2019-09-24 → 2019-09-26 (+2d) | 2019-09-26 → 2019-10-03 (+7d) | 3d → 6d |  |  | 11 → 8 | resources none → Renato [50%] |
| 13 | 001 Patrón del diseño del contrato de servicios | 2019-09-26 → 2019-10-03 (+7d) | 2019-09-26 → 2019-10-03 (+7d) |  |  | -1d → 6d |  | resources none → Renato [50%] |
| 14 | Patrón de la capacidad de composición del servicio. | 2019-09-26 → 2019-10-04 (+8d) | 2019-09-30 → 2019-10-11 (+11d) | 3d → 6d |  |  | 13 → 12 | resources none → Renato [50%] |
| 15 | Entregable - Documento de patrones de diseño SOA | 2019-09-30 → 2019-10-11 (+11d) | 2019-09-30 → 2019-10-11 (+11d) |  |  | none → 0d | none → 14 | resources none → Renato [50%] |
| 16 | **Principios de Diseño** | 2019-09-30 → 2019-10-11 (+11d) | 2019-10-02 → 2019-10-17 (+15d) | 3d → 4d |  |  | 10 → none |  |
| 17 | 002 Contratos de Servicio | 2019-09-30 → 2019-10-11 (+11d) | 2019-09-30 → 2019-10-11 (+11d) |  |  | -1d → 0d | none → 10 | resources none → Renato [50%] |
| 18 | Acoplamiento de Servicio | 2019-10-01 → 2019-10-14 (+13d) | 2019-10-02 → 2019-10-17 (+15d) | 2d → 4d |  |  |  | resources none → Renato [50%] |
| 19 | Entregable - Documento de principios de diseño | 2019-10-02 → 2019-10-17 (+15d) | 2019-10-02 → 2019-10-17 (+15d) |  |  | none → 0d | none → 18 | resources none → Renato [50%] |
| 20 | **Establecimiento de Estándares** | 2019-10-02 → 2019-10-17 (+15d) | 2019-10-04 → 2019-10-23 (+19d) | 3d → 4d |  |  | 16 → none |  |
| 21 | 003 La anotomía del contrato del WS | 2019-10-02 → 2019-10-17 (+15d) | 2019-10-02 → 2019-10-17 (+15d) |  |  | -1d → 0d | none → 16 | resources none → Renato [50%] |
| 22 | La guía para los Namespaces | 2019-10-03 → 2019-10-18 (+15d) | 2019-10-04 → 2019-10-23 (+19d) | 2d → 4d |  |  |  | resources none → Renato [50%] |
| 23 | Entregable - Documento establecimiento de estándares | 2019-10-04 → 2019-10-23 (+19d) | 2019-10-04 → 2019-10-23 (+19d) |  |  | none → 0d | none → 22 | resources none → Renato [50%] |
| 24 | **Inventario de Servicios** | 2019-10-07 → 2019-10-24 (+17d) | 2019-11-08 → 2020-01-01 (+54d) | 25d → 50d |  |  | 20 → none |  |
| 25 | Se debe definir del inventario actual a cuáles servicios se le realiza el perfil del Servicio recomendamos SAGA, SIPO o t24. | 2019-10-07 → 2019-10-24 (+17d) | 2019-10-11 → 2019-11-06 (+26d) | 5d → 10d |  |  | none → 20 | resources none → Renato [50%] |
| 26 | A los servicios previamente seleccionados se les realizara la ficha del Perfil del Servicio. | 2019-10-14 → 2019-11-07 (+24d) | 2019-11-08 → 2020-01-01 (+54d) | 20d → 40d |  |  |  | resources none → Renato [50%] |
| 27 | Entregable - Documento inventario de servicios y la ficha de perfil de cada uno según se haya elegido para un sistema | 2019-11-08 → 2020-01-01 (+54d) | 2019-11-08 → 2020-01-01 (+54d) |  |  | none → 0d | none → 26 | resources none → Renato [50%] |
| 28 | **SOA GOVERNANCE PROGRAM OFFICE (SGPO)** | 2019-11-11 → 2020-01-02 (+52d) | 2019-12-20 → 2020-03-25 (+96d) | 30d → 60d |  |  | 24 → none |  |
| 29 | Desde el punto de vista de gobernanza la Creación de la matriz de roles y responsabilidades a lo largo de todas las etapas del proyecto SOA. | 2019-11-11 → 2020-01-02 (+52d) | 2019-11-29 → 2020-02-12 (+75d) | 15d → 30d |  |  | none → 24 | resources none → Renato [50%] |
| 30 | Un mapeo entre los roles organizacionales y la governanza SOA sus preceptos y procesos. | 2019-12-02 → 2020-02-13 (+73d) | 2019-12-20 → 2020-03-25 (+96d) | 15d → 30d |  |  |  | resources none → Renato [50%] |
| 31 | Entregable - Documento - matriz de roles - responsabilidades y mapeo de roles - gobernanza | 2019-12-20 → 2020-03-25 (+96d) | 2019-12-20 → 2020-03-25 (+96d) |  |  | none → 0d | none → 30 | resources none → Renato [50%] |

## Version 3 (data date 2019-10-18, saved 2019-10-11, file Proyecto BP SOA v4 cambio 1 - estimado borrar.mpp)

Note of the change: subir documentación

Last finish stays 2020-03-25. Complete tasks 4 → 16.

Changed:

| ID | Task | Start | Finish | Complete | Total float |
| --- | --- | --- | --- | --- | --- |
| 1 | **Patrón y diseño de contrato SOA - Adelanto** |  | 2019-09-12 A | 89% → 100% | 139d → none |
| 4 | 001 Patrón del diseño del contrato de servicios |  | 2019-09-12 A | 67% → 100% | 139d → none |
| 5 | **Definición de etapas de proyecto SOA** |  | 2019-09-25 A | 40% → 100% | 130d → none |
| 7 | La descripción de cada una de esas etapas y sus acciones principales | 2019-09-16 A |  |  |  |
| 8 | Las acciones de gobierno SOA a ser ejecutadas durante la etapa de Análisis de Servicios | 2019-09-23 A | 2019-09-25 A | 0% → 100% | 0d → none |
| 9 | Entregable - Documento - matriz con la definición de etapas y acciones por cada una | 2019-09-25 A | 2019-09-25 A | 0% → 100% | 130d → none |
| 10 | **Patrones de Diseño SOA** | 2019-09-17 A | 2019-10-11 A | 0% → 100% | 0d → none |
| 11 | Se describirá el patrón de diseño SOA que se aplicará en el Banco Popular | 2019-09-17 A | 2019-09-20 A | 0% → 100% | 0d → none |
| 12 | Patrón de centralización del inventario de servicios | 2019-09-26 A | 2019-10-03 A | 0% → 100% | 0d → none |
| 13 | 001 Patrón del diseño del contrato de servicios | 2019-10-03 A | 2019-10-03 A | 0% → 100% | 6d → none |
| 14 | Patrón de la capacidad de composición del servicio. | 2019-10-04 A | 2019-10-11 A | 0% → 100% | 0d → none |
| 15 | Entregable - Documento de patrones de diseño SOA | 2019-10-11 A | 2019-10-11 A | 0% → 100% | 0d → none |
| 16 | **Principios de Diseño** | 2019-10-11 A | 2019-10-17 A | 0% → 100% | 0d → none |
| 17 | 002 Contratos de Servicio | 2019-10-11 A | 2019-10-11 A | 0% → 100% | 0d → none |
| 18 | Acoplamiento de Servicio | 2019-10-14 A | 2019-10-17 A | 0% → 100% | 0d → none |
| 19 | Entregable - Documento de principios de diseño | 2019-10-17 A | 2019-10-17 A | 0% → 100% | 0d → none |
| 20 | **Establecimiento de Estándares** | 2019-10-17 A |  | 0% → 25% |  |
| 21 | 003 La anotomía del contrato del WS | 2019-10-17 A | 2019-10-17 A | 0% → 100% | 0d → none |
| 22 | La guía para los Namespaces | 2019-10-18 A |  | 0% → 25% |  |
