# GOBIERNO SOA

How a schedule from MS Project changed from version to version. A marks actual dates.

## Version 1 (data date 2019-09-30, saved 2019-11-04, file Proyecto BP SOA v4 cambio 1 - real.mpp)

Note of the change: informe de 0811

| ID | WBS | Task | Duration | Start | Finish | Predecessors | Complete | Total float | Constraint |
| --- | --- | --- | --- | --- | --- | --- | --- | --- | --- |
| 1 | 1 | **Patrón y diseño de contrato SOA - Adelanto** | 9d | 2019-09-02 A | 2019-09-12 A |  | 100% |  |  |
| 2 |  | 003 La anotomía del contrato del WS | 3d | 2019-09-02 A | 2019-09-04 A |  | 100% |  | start no earlier than 2019-09-02 |
| 3 |  | 002 Principio de Diseño Contratos de Servicio | 3d | 2019-09-05 A | 2019-09-09 A | 2 | 100% |  |  |
| 4 |  | 001 Patrón del diseño del contrato de servicios | 3d | 2019-09-10 A | 2019-09-12 A | 3 | 100% |  | start no earlier than 2019-09-02 |
| 5 | 2 | **Definición de etapas de proyecto SOA** | 9d | 2019-09-13 A | 2019-09-25 A |  | 100% |  |  |
| 6 |  | Definir etapas fundamentales del ciclo de vida del proyecto SOA | 1d | 2019-09-13 A | 2019-09-13 A | 4 | 100% |  |  |
| 7 |  | La descripción de cada una de esas etapas y sus acciones principales | 1d | 2019-09-16 A | 2019-09-16 A | 6 | 100% |  |  |
| 8 |  | Las acciones de gobierno SOA a ser ejecutadas durante la etapa de Análisis de Servicios | 3d | 2019-09-23 A | 2019-09-25 A | 11 | 100% |  |  |
| 9 |  | Entregable - Documento - matriz con la definición de etapas y acciones por cada una | 0d | 2019-09-25 A | 2019-09-25 A | 8 | 100% |  |  |
| 10 | 3 | **Patrones de Diseño SOA** | 19d | 2019-09-17 A | 2019-10-11 A |  | 100% |  |  |
| 11 |  | Se describirá el patrón de diseño SOA que se aplicará en el Banco Popular | 4d | 2019-09-17 A | 2019-09-20 A | 7 | 100% |  |  |
| 12 |  | Patrón de centralización del inventario de servicios | 6d | 2019-09-26 A | 2019-10-03 A | 8 | 100% |  | start no earlier than 2019-09-11 |
| 13 |  | 001 Patrón del diseño del contrato de servicios | 0d | 2019-10-03 A | 2019-10-03 A | 12 | 100% |  |  |
| 14 |  | Patrón de la capacidad de composición del servicio. | 6d | 2019-10-04 A | 2019-10-11 A | 12 | 100% |  |  |
| 15 |  | Entregable - Documento de patrones de diseño SOA | 0d | 2019-10-11 A | 2019-10-11 A | 14 | 100% |  |  |
| 16 | 4 | **Principios de Diseño** | 4d | 2019-10-11 A | 2019-10-17 A |  | 100% |  |  |
| 17 |  | 002 Contratos de Servicio | 0d | 2019-10-11 A | 2019-10-11 A | 10 | 100% |  |  |
| 18 |  | Acoplamiento de Servicio | 4d | 2019-10-14 A | 2019-10-17 A | 17 | 100% |  |  |
| 19 |  | Entregable - Documento de principios de diseño | 0d | 2019-10-17 A | 2019-10-17 A | 18 | 100% |  |  |
| 20 | 5 | **Establecimiento de Estándares** | 4d | 2019-10-17 A | 2019-10-23 A |  | 100% |  |  |
| 21 |  | 003 La anotomía del contrato del WS | 0d | 2019-10-17 A | 2019-10-17 A | 16 | 100% |  |  |
| 22 |  | La guía para los Namespaces | 4d | 2019-10-18 A | 2019-10-23 A | 21 | 100% |  |  |
| 23 |  | Entregable - Documento establecimiento de estándares | 0d | 2019-10-23 A | 2019-10-23 A | 22 | 100% |  |  |
| 24 | 6 | **Inventario de Servicios** | 50d | 2019-10-24 | 2020-01-01 |  |  | 0d |  |
| 25 |  | Se debe definir del inventario actual a cuáles servicios se le realiza el perfil del Servicio recomendamos SAGA, SIPO o t24. | 10d | 2019-10-24 | 2019-11-06 | 20 |  | 0d |  |
| 26 |  | A los servicios previamente seleccionados se les realizara la ficha del Perfil del Servicio. | 40d | 2019-11-07 | 2020-01-01 | 25 |  | 0d |  |
| 27 |  | Entregable - Documento inventario de servicios y la ficha de perfil de cada uno según se haya elegido para un sistema | 0d | 2020-01-01 | 2020-01-01 | 26 |  | 0d |  |
| 28 | 7 | **SOA GOVERNANCE PROGRAM OFFICE (SGPO)** | 60d | 2020-01-02 | 2020-03-25 |  |  | 0d |  |
| 29 |  | Desde el punto de vista de gobernanza la Creación de la matriz de roles y responsabilidades a lo largo de todas las etapas del proyecto SOA. | 30d | 2020-01-02 | 2020-02-12 | 24 |  | 0d |  |
| 30 |  | Un mapeo entre los roles organizacionales y la governanza SOA sus preceptos y procesos. | 30d | 2020-02-13 | 2020-03-25 | 29 |  | 0d |  |
| 31 |  | Entregable - Documento - matriz de roles - responsabilidades y mapeo de roles - gobernanza | 0d | 2020-03-25 | 2020-03-25 | 30 |  | 0d |  |

## Version 2 (data date 2019-09-30, saved 2019-11-07, file Proyecto BP SOA v4 cambio 1 - real.mpp)

Note of the change: Seguimiento 8-11

Last finish stays 2020-03-25. Complete tasks 18 → 14.

Changed:

| ID | Task | Start | Finish | Complete | Total float |
| --- | --- | --- | --- | --- | --- |
| 16 | **Principios de Diseño** |  | 2019-10-17 A → 2019-10-17 | 100% → 90% | none → 0d |
| 18 | Acoplamiento de Servicio |  | 2019-10-17 A → 2019-10-17 | 100% → 90% | none → 0d |
| 20 | **Establecimiento de Estándares** | 2019-10-17 A → 2019-10-17 | 2019-10-23 A → 2019-10-23 | 100% → 0% | none → 0d |
| 21 | 003 La anotomía del contrato del WS | 2019-10-17 A → 2019-10-17 | 2019-10-17 A → 2019-10-17 | 100% → 0% | none → 0d |
| 22 | La guía para los Namespaces | 2019-10-18 A → 2019-10-18 | 2019-10-23 A → 2019-10-23 | 100% → 0% | none → 0d |
| 23 | Entregable - Documento establecimiento de estándares | 2019-10-23 A → 2019-10-23 | 2019-10-23 A → 2019-10-23 | 100% → 0% | none → 0d |

## Version 3 (data date 2019-11-08, saved 2019-11-08, file Proyecto BP SOA v4 cambio 1 - estimado.mpp)

Note of the change: informe de 0811

Last finish stays 2020-03-25. Complete tasks 14 → 19.

Changed:

| ID | Task | Start | Finish | Complete | Total float |
| --- | --- | --- | --- | --- | --- |
| 16 | **Principios de Diseño** |  | 2019-10-17 A | 90% → 100% | 0d → none |
| 18 | Acoplamiento de Servicio |  | 2019-10-17 A | 90% → 100% | 0d → none |
| 20 | **Establecimiento de Estándares** | 2019-10-17 A | 2019-10-23 A | 0% → 100% | 0d → none |
| 21 | 003 La anotomía del contrato del WS | 2019-10-17 A | 2019-10-17 A | 0% → 100% | 0d → none |
| 22 | La guía para los Namespaces | 2019-10-18 A | 2019-10-23 A | 0% → 100% | 0d → none |
| 23 | Entregable - Documento establecimiento de estándares | 2019-10-23 A | 2019-10-23 A | 0% → 100% | 0d → none |
| 24 | **Inventario de Servicios** | 2019-10-24 A |  | 0% → 24% |  |
| 25 | Se debe definir del inventario actual a cuáles servicios se le realiza el perfil del Servicio recomendamos SAGA, SIPO o t24. | 2019-10-24 A | 2019-11-06 A | 0% → 100% | 0d → none |
| 26 | A los servicios previamente seleccionados se les realizara la ficha del Perfil del Servicio. | 2019-11-07 A |  | 0% → 5% |  |
